# Northgate Distribution Center

How a schedule from Primavera P6 changed from version to version. A marks actual dates.

## Version 1 (data date 2026-09-07, saved 2026-10-16, file northgate_prev.xer)

| ID | WBS | Task | Duration | Start | Finish | Predecessors | Complete | Total float | Constraint |
| --- | --- | --- | --- | --- | --- | --- | --- | --- | --- |
|  | PM | **Project Management & Preconstruction** |  | 2026-03-02 | 2026-07-28 |  |  |  |  |
| A1010 |  | Design development review | 15d | 2026-03-02 A | 2026-03-20 A | M1000 | 100% |  |  |
| M1000 |  | Notice to proceed | 0d | 2026-03-02 A | 2026-03-02 A |  | 100% |  |  |
| A1020 |  | Building permit approval | 25d | 2026-03-23 A | 2026-05-08 A | A1010 | 100% |  |  |
| A1030 |  | Procure structural steel | 60d | 2026-03-23 A | 2026-06-26 A | A1010 | 100% |  |  |
| A1040 |  | Procure conveyor and sortation system | 90d | 2026-03-23 A | 2026-07-24 A | A1010 | 100% |  |  |
| A1050 |  | Procure selective racking | 50d | 2026-03-23 A | 2026-06-05 A | A1010 | 100% |  |  |
| A1060 |  | Procure switchgear and electrical gear | 80d | 2026-03-23 A | 2026-07-28 A | A1010 | 100% |  |  |
| A1070 |  | Procure dock levelers and overhead doors | 45d | 2026-03-23 A | 2026-05-22 A | A1010 | 100% |  |  |
|  | SITE | **Sitework** |  | 2026-05-11 | 2027-01-22 |  |  |  |  |
| A2010 |  | Mobilization | 5d | 2026-05-11 A | 2026-05-15 A | A1020 | 100% |  |  |
| A2020 |  | Clearing and grubbing | 10d | 2026-05-18 A | 2026-05-29 A | A2010 | 100% |  |  |
| A2030 |  | Mass excavation and grading | 20d | 2026-06-01 A | 2026-07-06 A | A2020 | 100% |  |  |
| A2040 |  | Underground utilities | 25d | 2026-06-15 A | 2026-07-21 A | A2030 SS+10d | 100% |  |  |
| A2050 |  | Stormwater detention pond | 20d | 2026-07-07 A | 2026-08-03 A | A2030 | 100% |  |  |
| A2060 |  | Paving and truck court | 30d | 2026-11-23 | 2027-01-01 | A3060 |  | 45d |  |
| A2070 |  | Site lighting and fencing | 15d | 2027-01-04 | 2027-01-22 | A2060 |  | 45d |  |
|  | FND | **Foundations & Slab** |  | 2026-07-07 | 2026-11-20 |  |  |  |  |
| A3010 |  | Building pad and compaction | 10d | 2026-07-07 A | 2026-07-21 A | A2030 | 100% |  |  |
| A3020 |  | Spread footings and piers | 20d | 2026-07-22 A | 2026-08-19 A | A3010 | 100% |  |  |
| A3030 |  | Grade beams | 15d | 2026-08-20 A | 2026-09-09 | A3020 | 80% | 25d |  |
| A3040 |  | Underslab plumbing and electrical | 12d | 2026-09-10 | 2026-09-25 | A3030, A2040 |  | 25d |  |
| A3050 |  | Slab on grade pour sequence | 25d | 2026-09-28 | 2026-10-30 | A3040 |  | 25d |  |
| A3060 |  | Dock pits and aprons | 15d | 2026-11-02 | 2026-11-20 | A3050 |  | 45d |  |
|  | STR | **Structure** |  | 2026-08-20 | 2026-10-21 |  |  |  |  |
| A4010 |  | Erect structural steel | 35d | 2026-08-20 A | 2026-10-09 | A3020, A1030 | 29% | -33d |  |
| A4020 |  | Steel joists and deck | 20d | 2026-09-03 A | 2026-09-30 | A4010 SS+10d | 10% | -23d |  |
| A4030 |  | Mezzanine steel and stairs | 15d | 2026-10-01 | 2026-10-21 | A4020 |  | -13d |  |
|  | ENV | **Building Envelope** |  | 2026-09-10 | 2026-12-11 |  |  |  |  |
| A5020 |  | Insulated metal wall panels | 30d | 2026-09-10 | 2026-10-21 | A4010 SS+15d |  | -13d |  |
| A5010 |  | Roofing membrane and insulation | 25d | 2026-10-01 | 2026-11-04 | A4020 |  | -23d |  |
| A5040 |  | Storefront and office glazing | 10d | 2026-10-22 | 2026-11-04 | A5020 |  | 102d |  |
| M5050 |  | Building dried in | 0d | 2026-11-04 | 2026-11-04 | A5010, A5020 |  | -23d |  |
| A5030 |  | Install overhead doors and dock levelers | 15d | 2026-11-23 | 2026-12-11 | A5020 FS-3d, A1070, A3060 |  | 75d |  |
|  | MEP | **MEP Systems** |  | 2026-11-05 | 2027-01-20 |  |  |  |  |
| A6010 |  | Install electrical service and switchgear | 20d | 2026-11-05 | 2026-12-02 | A1060, M5050 |  | 2d |  |
| A6020 |  | Lighting and branch power | 35d | 2026-11-05 | 2026-12-23 | M5050 |  | 2d |  |
| A6030 |  | ESFR fire sprinkler system | 40d | 2026-11-05 | 2026-12-30 | M5050 |  | -18d |  |
| A6040 |  | HVAC rooftop units and ductwork | 30d | 2026-11-05 | 2026-12-16 | M5050 |  | 27d |  |
| M6070 |  | Permanent power energized | 0d | 2026-12-02 | 2026-12-02 | A6010 |  | 2d |  |
| A6050 |  | Plumbing fixtures and office MEP | 20d | 2026-12-17 | 2027-01-13 | A6040 |  | 27d |  |
| A6060 |  | Fire alarm system | 20d | 2026-12-24 | 2027-01-20 | A6020 |  | 22d |  |
|  | MHE | **Material Handling Automation** |  | 2026-11-05 | 2027-02-17 |  |  |  |  |
| A7020 |  | Install conveyor system | 40d | 2026-11-05 | 2026-12-30 | A1040, M5050, A4030 |  | -23d |  |
| A7040 |  | Install AS/RS shuttle system | 60d | 2026-11-05 | 2027-01-27 | M5050 |  | -8d |  |
| A7030 |  | Install sortation and scanning | 25d | 2026-12-03 | 2027-01-06 | A7020 SS+20d |  | -23d |  |
| A7010 |  | Install selective racking | 30d | 2026-12-31 | 2027-02-10 | A3050, A1050, A6030 |  | -18d |  |
| A7050 |  | Controls and PLC programming | 30d | 2027-01-07 | 2027-02-17 | A7030, M6070 |  | -23d |  |
|  | WMS | **WMS & ERP Integration** |  | 2026-03-02 | 2027-04-14 |  |  |  |  |
| A8010 |  | WMS requirements and solution design | 30d | 2026-03-02 A | 2026-04-15 A | M1000 | 100% |  |  |
| A8020 |  | WMS configuration and build | 45d | 2026-04-16 A | 2026-06-19 A | A8010 | 100% |  |  |
| A8030 |  | Dynamics 365 EDI and API interfaces | 40d | 2026-04-16 A | 2026-06-16 A | A8010 | 100% |  |  |
| A8040 |  | Network and wireless infrastructure | 20d | 2026-12-24 | 2027-01-20 | A6020 |  | 2d |  |
| A8050 |  | WMS integration testing | 25d | 2027-02-18 | 2027-03-24 | A8020, A8030, A8040, A7050 |  | -18d |  |
| A8060 |  | Warehouse user training | 15d | 2027-03-25 | 2027-04-14 | A8050 |  | 40d |  |
|  | CX | **Commissioning & Closeout** |  | 2027-01-21 | 2027-06-09 |  |  |  |  |
| A9010 |  | MEP commissioning | 20d | 2027-01-21 | 2027-02-17 | A6050, A6060, M6070 |  | 22d |  |
| A9020 |  | Fire marshal inspection | 5d | 2027-02-18 | 2027-02-24 | A9010, A6030 |  | 22d |  |
| A9030 |  | Material handling commissioning | 30d | 2027-02-18 | 2027-03-31 | A7050, A7010, A7040 |  | -23d |  |
| A9050 |  | Certificate of occupancy | 10d | 2027-02-25 | 2027-03-10 | A9020, A2060, A2070, A5030, A5040 |  | 22d |  |
| A9040 |  | Integrated operations test | 15d | 2027-04-01 | 2027-04-21 | A9030, A8050 |  | -23d |  |
| A9060 |  | Punch list completion | 15d | 2027-04-22 | 2027-05-12 | A9040 |  | -23d |  |
| M9070 |  | Substantial completion | 0d | 2027-05-12 | 2027-05-12 | A9050, A9040, A9060 |  | -23d | finish on or before 2027-04-09 |
| A9080 |  | Closeout and turnover documentation | 20d | 2027-05-13 | 2027-06-09 | M9070 |  | 0d |  |
| M9090 |  | Project complete | 0d | 2027-06-09 | 2027-06-09 | A9080 |  | 0d |  |

## Version 2 (data date 2026-10-05, saved 2026-10-16, file northgate.xer)

Last finish 2027-06-09 → 2027-06-02 (-7d). Complete tasks 18 → 21.

Changed:

| ID | Task | Start | Finish | Duration | Complete | Total float | Predecessors | Other |
| --- | --- | --- | --- | --- | --- | --- | --- | --- |
| SITE | **Sitework** |  | 2027-01-22 → 2027-01-27 (+5d) |  |  |  |  |  |
| A2060 | Paving and truck court | 2026-11-23 → 2026-11-26 (+3d) | 2027-01-01 → 2027-01-06 (+5d) |  |  | 45d → 42d |  |  |
| A2070 | Site lighting and fencing | 2027-01-04 → 2027-01-07 (+3d) | 2027-01-22 → 2027-01-27 (+5d) |  |  | 45d → 42d |  |  |
| FND | **Foundations & Slab** |  | 2026-11-20 → 2026-11-25 (+5d) |  |  |  |  |  |
| A3030 | Grade beams |  | 2026-09-09 A |  | 80% → 100% | 25d → none |  |  |
| A3040 | Underslab plumbing and electrical | 2026-09-10 A | 2026-09-25 A |  | 0% → 100% | 25d → none |  |  |
| A3050 | Slab on grade pour sequence | 2026-09-28 A | 2026-10-30 → 2026-11-04 (+5d) |  | 0% → 8% | 25d → 27d |  |  |
| A3060 | Dock pits and aprons | 2026-11-02 → 2026-11-05 (+3d) | 2026-11-20 → 2026-11-25 (+5d) |  |  | 45d → 42d |  |  |
| A4010 | Erect structural steel |  |  |  | 29% → 86% | -33d → -23d |  |  |
| A4020 | Steel joists and deck |  | 2026-09-30 A |  | 10% → 100% | -23d → none |  |  |
| A4030 | Mezzanine steel and stairs | 2026-10-01 A |  |  | 0% → 13% | -13d → -8d |  |  |
| ENV | **Building Envelope** |  | 2026-12-11 → 2026-12-16 (+5d) |  |  |  |  |  |
| A5020 | Insulated metal wall panels | 2026-09-10 A |  |  | 0% → 57% | -13d → -8d |  |  |
| A5010 | Roofing membrane and insulation | 2026-10-01 A |  |  | 0% → 8% | -23d → -18d |  |  |
| A5030 | Install overhead doors and dock levelers | 2026-11-23 → 2026-11-26 (+3d) | 2026-12-11 → 2026-12-16 (+5d) |  |  | 75d → 72d |  |  |
| MHE | **Material Handling Automation** | 2026-11-05 → 2026-10-12 (-24d) |  |  |  |  |  |  |
| A7040 | Install AS/RS shuttle system | 2026-11-05 → 2026-10-12 (-24d) | 2027-01-27 → 2027-01-07 (-20d) |  |  | -8d → 0d |  | constraint none → start on 2026-10-12 |
| A7020 | Install conveyor system |  | 2026-12-30 → 2027-01-07 (+8d) |  |  | -23d → -18d |  |  |
| CX | **Commissioning & Closeout** |  | 2027-06-09 → 2027-06-02 (-7d) |  |  |  |  |  |
| A9030 | Material handling commissioning |  | 2027-03-31 → 2027-03-24 (-7d) | 30d → 25d |  | -23d → -18d |  | resources Subcontract [240 h] → Subcontract [200 h] |
| A9050 | Certificate of occupancy |  |  |  |  |  | A9020, A2060, A2070, A5030, A5040 → A9020, A2060, A2070, A5030 |  |
| A9040 | Integrated operations test | 2027-04-01 → 2027-03-25 (-7d) | 2027-04-21 → 2027-04-14 (-7d) |  |  | -23d → -18d |  |  |
| A9060 | Punch list completion | 2027-04-22 → 2027-04-15 (-7d) | 2027-05-12 → 2027-05-05 (-7d) |  |  | -23d → -18d |  |  |
| M9070 | Substantial completion | 2027-05-12 → 2027-05-05 (-7d) | 2027-05-12 → 2027-05-05 (-7d) |  |  | -23d → -18d |  |  |
| A9080 | Closeout and turnover documentation | 2027-05-13 → 2027-05-06 (-7d) | 2027-06-09 → 2027-06-02 (-7d) |  |  |  |  |  |
| M9090 | Project complete | 2027-06-09 → 2027-06-02 (-7d) | 2027-06-09 → 2027-06-02 (-7d) |  |  |  |  |  |
